# Cronograma Projeto - Registro Caixa

Schedule from MS Project, 2016-03-02 to 2016-07-27, A marks actual dates.

## Calendars

- Padrão: Mon-Fri 08:00-12:00, 13:00-17:00; Sat-Sun off.

## Resources

| Resource |
| --- |
| Gerente |
| Gerente de Projeto |
| Analista de Sistemas |
| Arquiteto de Software |
| Desenvolvedor |
| Analista de Testes |
| Gerente-Lucas Amaral |
| Gerente de Projeto-Lucas Amaral |
| Analista de Sistemas-Rogério R. Fernandes |
| Analista de Sistemas-Lucas Amaral |
| Gerente de Projeto-Rogério R. Fernandes |

## Schedule

| ID | WBS | Task | Type | Duration | Start | Finish | Predecessors | Complete | Remaining | Actual start | Constraint | Resources | Work | Actual work |
| --- | --- | --- | --- | --- | --- | --- | --- | --- | --- | --- | --- | --- | --- | --- |
| 1 | 1 | **Prática em SI - Cronograma Projeto - My Money** |  | 106d | 2016-03-02 A | 2016-07-27 |  | 77% | 24.14d |  |  |  | 2231h | 1219.88h |
| 2 | 1.1 | **Concepção** |  | 26d | 2016-03-02 A | 2016-04-06 |  | 99% | 0d |  |  |  | 1047h | 667.88h |
| 3 | 1.1.1 | Plano de Projeto |  | 2d | 2016-03-02 A | 2016-03-04 A |  | 100% |  |  | finish no earlier than 2016-03-03 | Gerente-Lucas Amaral; Gerente de Projeto-Rogério R. Fernandes | 15h | 15h |
| 4 | 1.1.2 | Cronograma |  | 3d | 2016-03-04 A | 2016-03-09 A | 3 | 100% |  |  |  | Gerente de Projeto-Lucas Amaral; Analista de Sistemas-Rogério R. Fernandes | 48h | 48h |
| 5 | 1.1.3 | Modelagem de Processos de Negócio |  | 7d | 2016-03-09 A | 2016-03-18 A | 4 | 100% |  |  | start no earlier than 2016-03-09 | Gerente de Projeto-Rogério R. Fernandes; Analista de Sistemas-Lucas Amaral | 56h | 56h |
| 6 | 1.1.4 | **Requisitos e Análise** |  | 22d | 2016-03-08 A | 2016-04-06 |  | 99% | 0d |  |  | Gerente de Projeto-Lucas Amaral; Analista de Sistemas-Rogério R. Fernandes | 928h | 548.88h |
| 7 | 1.1.4.1 | Casos de Uso / Requisitos Funcionais | manual | 7d | 2016-03-18 A | 2016-03-29 A | 5 | 100% |  |  |  | Analista de Sistemas-Lucas Amaral; Gerente de Projeto-Rogério R. Fernandes | 56h | 56h |
| 8 | 1.1.4.2 | Requisitos Não Funcionais | manual | 2d | 2016-03-18 A | 2016-03-22 A | 5 | 100% |  |  |  | Gerente de Projeto-Lucas Amaral; Analista de Sistemas-Rogério R. Fernandes | 24h | 24h |
| 9 | 1.1.4.3 | Modelo de Domínio Preliminar | manual | 3d | 2016-03-29 A | 2016-04-01 A | 7, 8 | 100% |  |  |  | Analista de Sistemas-Lucas Amaral; Gerente de Projeto-Rogério R. Fernandes | 48h | 48h |
| 10 | 1.1.4.4 | Estimativa | manual | 2d | 2016-04-01 A | 2016-04-05 A | 9 | 100% |  |  |  | Gerente de Projeto-Lucas Amaral; Analista de Sistemas-Rogério R. Fernandes | 32h | 32h |
| 11 | 1.1.4.5 | **Gerenciamento de Projeto** |  | 21d | 2016-03-08 A | 2016-04-06 |  | 99% | 0d |  |  | Gerente de Projeto-Rogério R. Fernandes; Analista de Sistemas-Lucas Amaral | 416h | 347.2h |
| 12 | 1.1.4.5.1 | Monitoramento e controle - Relatório de Progresso 01 | manual | 1d | 2016-03-08 A | 2016-03-08 A |  | 100% |  |  |  | Analista de Sistemas-Rogério R. Fernandes; Gerente de Projeto-Lucas Amaral | 16h | 16h |
| 13 | 1.1.4.5.2 | Monitoramento e controle - Relatório de Progresso 02 | manual | 1d | 2016-03-15 A | 2016-03-15 A |  | 100% |  |  |  | Analista de Sistemas-Lucas Amaral; Gerente de Projeto-Rogério R. Fernandes | 16h | 16h |
| 14 | 1.1.4.5.3 | Monitoramento e controle - Relatório de Progresso 03 | manual | 1d | 2016-03-22 A | 2016-03-22 A |  | 100% |  |  |  | Analista de Sistemas-Rogério R. Fernandes; Gerente de Projeto-Lucas Amaral | 16h | 16h |
| 15 | 1.1.4.5.4 | Monitoramento e controle - Relatório de Progresso 04 | manual | 1d | 2016-03-29 A | 2016-03-29 A |  | 100% |  |  |  | Analista de Sistemas-Lucas Amaral; Gerente de Projeto-Rogério R. Fernandes | 16h | 16h |
| 16 | 1.1.4.5.5 | Monitoramento e controle - Relatório de Progresso 05 | manual | 1d | 2016-04-05 A | 2016-04-05 A |  | 100% |  |  |  | Analista de Sistemas-Rogério R. Fernandes; Gerente de Projeto-Lucas Amaral | 16h | 16h |
| 17 | 1.2 | Apresentação 1o Trabalho | manual | 6d | 2016-04-06 A | 2016-04-13 A |  | 100% |  |  |  |  |  |  |
| 18 | 1.3 | **Elaboração** |  | 22d | 2016-04-25 | 2016-05-24 |  | 88% | 2.68d | 2016-04-20 |  |  | 928h | 552h |
| 19 | 1.3.1 | **Gerenciamento de Projeto** |  | 24d | 2016-04-20 A | 2016-05-24 |  | 83% | 4d |  |  | Gerente-Lucas Amaral; Gerente de Projeto-Rogério R. Fernandes | 432h | 112h |
| 20 | 1.3.1.1 | Revisão do Planejamento | manual | 1d | 2016-04-20 A | 2016-04-20 A | 17 | 100% |  |  |  | Gerente de Projeto-Lucas Amaral; Analista de Sistemas-Rogério R. Fernandes | 16h | 16h |
| 21 | 1.3.1.2 | Monitoramento e controle - Relatório de Progresso 06 |  | 1d | 2016-04-26 A | 2016-04-27 A | 20 | 100% |  |  | finish no earlier than 2016-04-27 | Gerente de Projeto-Rogério R. Fernandes; Analista de Sistemas-Lucas Amaral | 16h | 16h |
| 22 | 1.3.1.3 | Monitoramento e controle - Relatório de Progresso 07 | manual | 1d | 2016-05-04 A | 2016-05-04 A | 21 | 100% |  |  |  | Gerente de Projeto-Lucas Amaral; Analista de Sistemas-Rogério R. Fernandes | 16h | 16h |
| 23 | 1.3.1.4 | Monitoramento e controle - Relatório de Progresso 08 | manual | 1d | 2016-05-11 A | 2016-05-11 A | 22 | 100% |  |  |  | Gerente de Projeto-Rogério R. Fernandes; Analista de Sistemas-Lucas Amaral | 16h | 16h |
| 24 | 1.3.1.5 | Monitoramento e controle - Relatório de Progresso 09 | manual | 1d | 2016-05-18 A | 2016-05-18 A | 23 | 100% |  |  |  | Gerente de Projeto-Lucas Amaral; Analista de Sistemas-Rogério R. Fernandes | 16h | 16h |
| 25 | 1.3.1.6 | Monitoramento e controle - Relatório de Progresso 10 | manual | 1d | 2016-05-23 | 2016-05-24 | 24 |  |  |  |  | Gerente de Projeto-Rogério R. Fernandes; Analista de Sistemas-Lucas Amaral | 16h |  |
| 26 | 1.3.2 | Projeto (arquitetura) |  | 11d | 2016-04-26 A | 2016-05-11 A | 20 | 100% |  |  | finish no earlier than 2016-05-04 | Gerente de Projeto-Rogério R. Fernandes; Analista de Sistemas-Lucas Amaral | 176h | 176h |
| 27 | 1.3.3 | Preparação do ambiente de desenvolvimento | manual | 6d | 2016-05-04 A | 2016-05-11 A |  | 100% |  |  |  | Gerente de Projeto-Lucas Amaral; Analista de Sistemas-Rogério R. Fernandes | 96h | 96h |

Notes:
- 20: Planejar projeto / Elaborar o cronograma
- 21: Acompanhar o progresso em relação ao planejamento / Reportar o progresso do projeto periodicamente
- 26: Documentar arquitetura do software

| ID | WBS | Task | Type | Duration | Start | Finish | Predecessors | Complete | Remaining | Actual start | Total slack | Free slack | Resources | Work | Actual work |
| --- | --- | --- | --- | --- | --- | --- | --- | --- | --- | --- | --- | --- | --- | --- | --- |
| 28 | 1.3.4 | **UC05: Manter usuário** |  | 13d | 2016-05-02 | 2016-05-18 |  | 76% | 3.18d | 2016-05-06 |  |  |  | 144h | 108.8h |
| 29 | 1.3.4.1 | Requisitos e Análise (detalhamento e prototipação) | manual | 1d | 2016-05-06 A | 2016-05-06 A | 26 | 100% |  |  |  |  | Gerente de Projeto-Lucas Amaral; Analista de Sistemas-Rogério R. Fernandes | 16h | 16h |
| 30 | 1.3.4.2 | Implementação |  | 7d | 2016-05-09 A | 2016-05-17 | 29 | 75% | 1.75d |  | 49.7d | 0d | Gerente de Projeto-Rogério R. Fernandes; Analista de Sistemas-Lucas Amaral | 112h | 84h |
| 31 | 1.3.4.3 | Teste |  | 1d | 2016-05-18 A | 2016-05-18 | 30 | 55% | 0.45d |  | 49.5d | 3.12d | Gerente de Projeto-Lucas Amaral; Analista de Sistemas-Rogério R. Fernandes | 16h | 8.8h |
| 32 | 1.3.5 | **UC01: Manter despesas financeiras** |  | 5d | 2016-05-18 A | 2016-05-24 |  | 74% | 1.3d |  |  |  |  | 80h | 59.2h |
| 33 | 1.3.5.1 | Requisitos e Análise (detalhamento e prototipação) | manual | 2d | 2016-05-18 A | 2016-05-20 A | 29 | 100% |  |  |  |  | Gerente de Projeto-Rogério R. Fernandes; Analista de Sistemas-Lucas Amaral | 32h | 32h |
| 34 | 1.3.5.2 | Implementação |  | 2d | 2016-05-20 A | 2016-05-24 | 30, 33 | 60% | 0.8d |  | 46.38d | 0d | Gerente de Projeto-Lucas Amaral; Analista de Sistemas-Rogério R. Fernandes | 32h | 19.2h |
| 35 | 1.3.5.3 | Teste | manual | 1d | 2016-05-24 A | 2016-05-24 | 31, 34 | 50% | 0.5d |  |  |  | Gerente de Projeto-Rogério R. Fernandes; Analista de Sistemas-Lucas Amaral | 16h | 8h |
| 36 | 1.4 | Apresentação 2o Trabalho | manual | 1d | 2016-05-25 | 2016-05-25 |  |  |  |  |  |  | Gerente de Projeto-Lucas Amaral; Analista de Sistemas-Rogério R. Fernandes | 16h |  |
| 37 | 1.5 | **Construção** |  | 15d? | 2016-05-26 | 2016-06-16 |  |  |  |  | 0d |  |  | 192h |  |
| 38 | 1.5.1 | **Gerenciamento de Projeto** |  | 1d? | 2016-05-26 | 2016-05-27 |  |  |  |  | 0d |  |  | 48h |  |
| 39 | 1.5.1.1 | Planejamento | manual | 1d? | 2016-05-26 | 2016-05-27 |  |  |  |  |  |  | Gerente de Projeto-Lucas Amaral; Analista de Sistemas-Rogério R. Fernandes | 16h |  |
| 40 | 1.5.1.2 | Monitoramento e controle - Relatório de Progresso ?? | manual | 1d? | 2016-05-26 | 2016-05-27 |  |  |  |  |  |  | Gerente de Projeto-Rogério R. Fernandes; Analista de Sistemas-Lucas Amaral | 16h |  |
| 41 | 1.5.1.3 | Monitoramento e controle - Relatório de Progresso ?? | manual | 1d? | 2016-05-26 | 2016-05-27 |  |  |  |  |  |  | Gerente de Projeto-Lucas Amaral; Analista de Sistemas-Rogério R. Fernandes | 16h |  |
| 42 | 1.5.2 | **UC03: Fechamento de Caixa** |  | 4.12d? | 2016-05-28 | 2016-06-03 |  |  |  |  | 0d |  |  | 48h |  |
| 43 | 1.5.2.1 | Requisitos e Análise (detalhamento e prototipação) | manual | 1d? | 2016-05-28 | 2016-05-30 | 39 |  |  |  |  |  | Gerente de Projeto-Rogério R. Fernandes; Analista de Sistemas-Lucas Amaral | 16h |  |
| 44 | 1.5.2.2 | Implementação | manual | 1d? | 2016-05-31 | 2016-06-01 | 43 |  |  |  |  |  | Gerente de Projeto-Lucas Amaral; Analista de Sistemas-Rogério R. Fernandes | 16h |  |
| 45 | 1.5.2.3 | Teste | manual | 1d? | 2016-06-02 | 2016-06-03 | 44 |  |  |  |  |  | Gerente de Projeto-Rogério R. Fernandes; Analista de Sistemas-Lucas Amaral | 16h |  |
| 46 | 1.5.3 | **UC04: Cadastro de Produto** |  | 4.12d? | 2016-06-04 | 2016-06-10 |  |  |  |  | 0d |  |  | 48h |  |
| 47 | 1.5.3.1 | Requisitos e Análise (detalhamento e prototipação) | manual | 1d? | 2016-06-04 | 2016-06-06 | 43 |  |  |  |  |  | Gerente de Projeto-Lucas Amaral; Analista de Sistemas-Rogério R. Fernandes | 16h |  |
| 48 | 1.5.3.2 | Implementação | manual | 1d? | 2016-06-07 | 2016-06-08 | 47, 44 |  |  |  |  |  | Gerente de Projeto-Rogério R. Fernandes; Analista de Sistemas-Lucas Amaral | 16h |  |
| 49 | 1.5.3.3 | Teste | manual | 1d? | 2016-06-09 | 2016-06-10 | 48, 45 |  |  |  |  |  | Gerente de Projeto-Lucas Amaral; Analista de Sistemas-Rogério R. Fernandes | 16h |  |
| 50 | 1.5.4 | **UC05: Cadastro de Caixa** |  | 3.12d? | 2016-06-11 | 2016-06-16 |  |  |  |  | 0d |  |  | 48h |  |
| 51 | 1.5.4.1 | Requisitos e Análise (detalhamento e prototipação) | manual | 1d? | 2016-06-11 | 2016-06-13 | 47 |  |  |  |  |  | Gerente de Projeto-Rogério R. Fernandes; Analista de Sistemas-Lucas Amaral | 16h |  |
| 52 | 1.5.4.2 | Implementação | manual | 1d? | 2016-06-14 | 2016-06-15 | 48, 51 |  |  |  |  |  | Gerente de Projeto-Lucas Amaral; Analista de Sistemas-Rogério R. Fernandes | 16h |  |
| 53 | 1.5.4.3 | Teste | manual | 1d? | 2016-06-15 | 2016-06-16 | 49, 52 |  |  |  |  |  | Gerente de Projeto-Rogério R. Fernandes; Analista de Sistemas-Lucas Amaral | 16h |  |

Notes:
- 29: Desenhar interface com usuário / Detalhar casos de uso, requisitos (cenários) e modelo de domínio
- 30: Implementar arquitetura
- 31: Testar arquitetura
- 33: Desenhar interface com usuário / Detalhar casos de uso, requisitos (cenários) e modelo de domínio
- 34: Implementar arquitetura
- 35: Testar arquitetura
- 39: Planejar projeto / Elaborar o cronograma
- 40: Acompanhar o progresso em relação ao planejamento / Reportar o progresso do projeto periodicamente
- 43: Desenhar interface com usuário / Detalhar casos de uso, requisitos (cenários) e modelo de domínio
- 44: Implementar funcionalidades
- 45: Testar funcionalidades
- 47: Desenhar interface com usuário / Detalhar casos de uso, requisitos (cenários) e modelo de domínio
- 48: Implementar funcionalidades
- 49: Testar funcionalidades
- 51: Desenhar interface com usuário / Detalhar casos de uso, requisitos (cenários) e modelo de domínio
- 52: Implementar funcionalidades
- 53: Testar funcionalidades

| ID | WBS | Task | Type | Duration | Start | Finish | Predecessors | Total slack | Resources | Work |
| --- | --- | --- | --- | --- | --- | --- | --- | --- | --- | --- |
| 54 | 1.6 | **Transição** |  | 1d | 2016-06-16 | 2016-06-17 |  | 28.88d |  | 16h |
| 55 | 1.6.1 | Implantação |  | 1d | 2016-06-16 | 2016-06-17 | 53 | 28.88d | Gerente de Projeto-Lucas Amaral; Analista de Sistemas-Rogério R. Fernandes | 16h |
| 56 | 1.7 | Apresentação 3o Trabalho | manual | 2d | 2016-06-25 | 2016-06-28 |  |  | Gerente de Projeto-Rogério R. Fernandes; Analista de Sistemas-Lucas Amaral | 32h |

Notes:
- 55: Elaborar roteiro de homologação e implantação
